# Sexy

Schedule from MS Project, 2017-01-09 to 2017-04-07, costs in $.
Toshiba

## Calendars

- SexyCalendario: Mon-Sat 07:30-12:00, 16:30-20:30; Sun off. Exceptions (off unless hours are given): 2017-02-06 (Puente), 2017-03-20 (Dia de descanso obligatorio).

## Resources

| Resource | Rate |
| --- | --- |
| Administrador de Proyecto | 118 |
| Análista | 85.63 |
| Diseñador | 103 |
| Programador | 72.12 |
| Tester | 97 |
| Latop HP 1 | 8 |
| Latop HP 2 | 8 |
| Laptop Toshiba | 8 |

## Schedule

| ID | WBS | Task | Duration | Start | Finish | Predecessors | Total slack | Constraint | Resources | Work | Cost |
| --- | --- | --- | --- | --- | --- | --- | --- | --- | --- | --- | --- |
| 1 | 1 | **SEXY LADY** | 79d | 2017-01-09 | 2017-04-07 |  | 0d |  |  | 594.67h | 49,807.23 |
| 2 | 1.1 | **PLANEACIÓN** | 4d | 2017-01-09 | 2017-01-12 |  | 0d |  |  | 32h | 3,800 |
| 3 | 1.1.1 | Minuta inicial | 1d | 2017-01-09 | 2017-01-09 |  | 0d | finish no earlier than 2017-01-09 | Administrador de Proyecto; Laptop Toshiba | 8h | 952 |
| 4 | 1.1.2 | Realizar entrevista | 2d | 2017-01-10 | 2017-01-11 | 3 | 0d |  | Administrador de Proyecto; Laptop Toshiba | 16h | 1,896 |
| 5 | 1.1.3 | Definir acta de inicio de proyecto | 1d | 2017-01-11 | 2017-01-12 | 4 | 0d |  | Administrador de Proyecto; Laptop Toshiba | 8h | 952 |
| 6 | 1.2 | **ANALISIS** | 10d | 2017-01-12 | 2017-01-24 |  | 0d |  |  | 72h | 5,989.2 |
| 7 | 1.2.1 | Recopilacion de Requerimientos | 2d | 2017-01-12 | 2017-01-14 | 5 | 0d | finish no earlier than 2017-01-13 | Análista; Latop HP 2 | 16h | 1,378.08 |
| 8 | 1.2.2 | Realizar entrevista | 1d | 2017-01-14 | 2017-01-16 | 7 | 0d |  | Análista; Latop HP 2 | 8h | 693.04 |
| 9 | 1.2.3 | Definir objetivos | 3d | 2017-01-16 | 2017-01-19 | 8 | 0d | finish no earlier than 2017-01-16 | Análista; Latop HP 2 | 24h | 2,063.12 |
| 10 | 1.2.4 | Elaboración de milestones | 2d | 2017-01-19 | 2017-01-21 | 9 | 0d | finish no earlier than 2017-01-17 | Análista [50%]; Latop HP 2 | 8h | 693.04 |
| 11 | 1.2.5 | Elaboración de deliverables | 2d | 2017-01-21 | 2017-01-24 | 10 | 0d | finish no earlier than 2017-01-19 | Latop HP 2; Programador | 16h | 1,161.92 |
| 12 | 1.3 | **DISEÑO** | 14d | 2017-01-24 | 2017-02-09 |  | 0d |  |  | 82.67h | 8,538.67 |
| 13 | 1.3.1 | **Diseño de diagramas** | 14d | 2017-01-24 | 2017-02-09 |  | 0d |  |  | 82.67h | 8,538.67 |
| 14 | 1.3.1.1 | Diagrama E-R | 4d | 2017-01-24 | 2017-01-27 | 11 | 0d | finish no earlier than 2017-01-24 | Diseñador; Laptop Toshiba | 32h | 3,304 |
| 15 | 1.3.1.2 | Diagrama relacional | 5d | 2017-01-28 | 2017-02-02 | 14 | 0d | finish no earlier than 2017-01-26 | Diseñador [60%]; Laptop Toshiba | 24h | 2,480 |
| 16 | 1.3.1.3 | Diseño de BD | 5d | 2017-02-02 | 2017-02-09 | 15 | 0d | finish no earlier than 2017-01-31 | Diseñador [66.7%]; Laptop Toshiba | 26.67h | 2,754.67 |
| 17 | 1.4 | **CODIFICACIÓN** | 40d | 2017-02-09 | 2017-03-27 |  | 0d |  |  | 320h | 23,118.4 |
| 18 | 1.4.1 | **Procedimientos almacenados** | 30d | 2017-02-09 | 2017-03-14 |  | 0d |  |  | 240h | 17,340.8 |
| 19 | 1.4.1.1 | Altas | 7d | 2017-02-09 | 2017-02-16 | 16 | 0d |  | Latop HP 1; Programador | 56h | 4,046.72 |
| 20 | 1.4.1.2 | Bajas | 7d | 2017-02-17 | 2017-02-24 | 19 | 0d |  | Latop HP 1; Programador | 56h | 4,046.72 |
| 21 | 1.4.1.3 | Actualización | 7d | 2017-02-24 | 2017-03-04 | 20 | 0d |  | Latop HP 1; Programador | 56h | 4,046.72 |
| 22 | 1.4.1.4 | Consulta | 9d | 2017-03-04 | 2017-03-14 | 21 | 0d |  | Latop HP 1; Programador | 72h | 5,200.64 |
| 23 | 1.4.2 | Creación de vistas | 10d | 2017-03-14 | 2017-03-27 | 22 | 0d |  | Latop HP 1; Programador | 80h | 5,777.6 |
| 24 | 1.5 | **PRUEBAS** | 10d | 2017-03-27 | 2017-04-06 |  | 0d |  |  | 80h | 7,776 |
| 25 | 1.5.1 | Pruebas unitarias | 5d | 2017-03-27 | 2017-03-31 | 23 | 0d | finish no earlier than 2017-03-25 | Latop HP 2; Tester | 40h | 3,888 |
| 26 | 1.5.2 | Reporte de las pruebas | 5d | 2017-03-31 | 2017-04-06 | 25 | 0d |  | Latop HP 2; Tester | 40h | 3,888 |

| ID | WBS | Task | Duration | Start | Finish | Predecessors | Total slack | Constraint | Resources | Work | Cost |
| --- | --- | --- | --- | --- | --- | --- | --- | --- | --- | --- | --- |
| 27 | 1.6 | **IMPLEMENTACIÓN** | 1d | 2017-04-06 | 2017-04-07 |  | 0d |  |  | 8h | 584.96 |
| 28 | 1.6.1 | Montar la base de datos | 1d | 2017-04-06 | 2017-04-07 | 26 | 0d | start no earlier than 2017-04-01 | Latop HP 1; Programador | 8h | 584.96 |
